# GP-ProjetQCM

Schedule from MS Project, 2015-10-07 to 2016-08-07, 2 hours a day, costs in €, A marks actual dates.

## Calendars

- Standard: Mon-Fri 17:00-19:00; Sat-Sun 09:00-12:00. Exceptions (off unless hours are given): 2015-10-12 to 2015-10-16 19:00-20:00 (Période en entreprise), 2015-10-19 to 2015-10-23 19:00-20:00 (Période en entreprise), 2015-10-26 to 2015-10-30 19:00-20:00 (Période en entreprise), 2015-11-02 to 2015-11-06 19:00-20:00 (Période en entreprise), 2015-11-09 to 2015-11-13 19:00-20:00 (Période en entreprise), 2015-11-16 09:00-12:00, 14:00-18:00 (Projet), 2015-11-18 09:00-12:00 (Projet), 2015-11-30 09:00-12:00, 14:00-18:00 (Projet), 2015-12-04 09:00-12:00 (Projet), 2015-12-07 to 2015-12-11 19:00-20:00 (Période en entreprise), 2015-12-14 to 2015-12-18 19:00-20:00 (Période en entreprise), 2015-12-21 to 2015-12-23 19:00-20:00 (Période en entreprise), 2015-12-24 to 2015-12-25 (Noël), 2015-12-28 to 2015-12-31 19:00-20:00 (Période en entreprise), 2016-01-01 to 2016-01-02 (Nouvel An), 2016-01-04 to 2016-01-08 19:00-20:00 (Période en entreprise), 2016-01-18 09:00-12:00, 14:00-18:00 (Projet), 2016-01-27 09:00-12:00, 14:00-18:00 (Projet), 2016-02-01 to 2016-02-05 19:00-20:00 (Période en entreprise), 2016-02-08 to 2016-02-12 19:00-20:00 (Période en entreprise), 2016-02-15 to 2016-02-19 19:00-20:00 (Période en entreprise), 2016-02-22 to 2016-02-26 19:00-20:00 (Période en entreprise), 2016-02-29 to 2016-03-04 19:00-20:00 (Période en entreprise), 2016-03-11 09:00-12:00 (Projet), 2016-03-21 14:00-19:00 (Projet), 2016-03-28 to 2016-04-01 19:00-20:00 (Période en entreprise), 2016-04-04 to 2016-04-08 19:00-20:00 (Période en entreprise), 2016-04-11 to 2016-04-15 19:00-20:00 (Période en entreprise), 2016-04-18 to 2016-04-22 19:00-20:00 (Période en entreprise), 2016-04-25 to 2016-04-29 19:00-20:00 (Période en entreprise), 2016-05-02 to 2016-05-06 19:00-20:00 (Période en entreprise), 2016-05-11 09:00-12:00, 14:00-18:00 (Projet), 2016-05-18 09:00-12:00, 14:00-18:00 (Projet), 2016-05-23 to 2016-05-27 19:00-20:00 (Période en entreprise), 2016-05-30 to 2016-06-03 19:00-20:00 (Période en entreprise), 2016-06-06 to 2016-06-10 19:00-20:00 (Période en entreprise), 2016-06-13 to 2016-06-17 19:00-20:00 (Période en entreprise), 2016-06-20 to 2016-06-24 19:00-20:00 (Période en entreprise), 2016-06-29 09:00-12:00, 14:00-18:00 (Projet), 2016-07-01 09:00-12:00, 14:00-18:00 (Projet), 2016-07-07 09:00-12:00, 14:00-19:00 (Projet).

## Resources

| Resource | Rate |
| --- | --- |
| Antoine Trouvé | 72 |

## Schedule

| ID | WBS | Task | Type | Duration | Start | Finish | Predecessors | Complete | Remaining | Baseline start | Baseline finish | Baseline duration | Baseline 1 start | Baseline 1 finish | Total slack | Free slack | Resources | Work | Actual work | Cost | Actual cost |
| --- | --- | --- | --- | --- | --- | --- | --- | --- | --- | --- | --- | --- | --- | --- | --- | --- | --- | --- | --- | --- | --- |
| 1 | 1 | Expression des besoins et exigences comportementales |  | 2d | 2015-10-07 A | 2015-10-08 A |  | 100% |  | 2015-10-07 | 2015-10-08 | 2d | 2015-10-07 | 2015-10-08 |  |  | Antoine Trouvé | 4h | 4h | 288 | 288 |
| 2 | 2 | **Conception** |  | 68d | 2015-10-09 A | 2015-12-15 | 1 | 43% | 39.05d | 2015-10-09 | 2015-12-19 | 70d | 2015-10-09 | 2015-12-15 | 33.5d |  |  | 148h | 63h | 10,656 | 4,536 |
| 3 | 2.1 | **Rédaction des spécifications générales** |  | 30d | 2015-10-09 A | 2015-11-14 A | 1 | 100% |  | 2015-10-09 | 2015-11-14 | 30d | 2015-10-09 | 2015-11-14 |  |  |  | 60h | 60h | 4,320 | 4,320 |
| 4 | 2.1.1 | Rédaction et mise en forme du document |  | 2d | 2015-11-13 A | 2015-11-14 A | 12 | 100% |  | 2015-11-13 | 2015-11-14 | 2d | 2015-11-13 | 2015-11-14 |  |  | Antoine Trouvé | 4h | 4h | 288 | 288 |
| 5 | 2.1.2 | Analyse du besoin fonctionnel |  | 5d | 2015-10-09 A | 2015-10-13 A | 1 | 100% |  | 2015-10-09 | 2015-10-13 | 5d | 2015-10-09 | 2015-10-13 |  |  | Antoine Trouvé | 10h | 10h | 720 | 720 |
| 6 | 2.1.3 | Conception des maquettes |  | 2d | 2015-10-14 A | 2015-10-17 A | 5 | 100% |  | 2015-10-14 | 2015-10-17 | 2d | 2015-10-14 | 2015-10-17 |  |  | Antoine Trouvé | 4h | 4h | 288 | 288 |
| 7 | 2.1.4 | Conception des UserCase |  | 3d | 2015-10-17 A | 2015-10-19 A | 6 | 100% |  | 2015-10-17 | 2015-10-19 | 3d | 2015-10-17 | 2015-10-19 |  |  | Antoine Trouvé | 6h | 6h | 432 | 432 |
| 8 | 2.1.5 | Liste et Analyse des fonctions |  | 5d | 2015-10-20 A | 2015-10-25 A | 7 | 100% |  | 2015-10-20 | 2015-10-25 | 5d | 2015-10-20 | 2015-10-25 |  |  | Antoine Trouvé | 10h | 10h | 720 | 720 |
| 9 | 2.1.6 | Planification prévisionnelle |  | 5d | 2015-11-05 A | 2015-11-10 A | 10, 11 | 100% |  | 2015-11-05 | 2015-11-10 | 5d | 2015-11-05 | 2015-11-10 |  |  | Antoine Trouvé | 10h | 10h | 720 | 720 |
| 10 | 2.1.7 | Mise en place Gantt / PERT |  | 5d | 2015-10-26 A | 2015-11-01 A | 8 | 100% |  | 2015-10-26 | 2015-11-01 | 5d | 2015-10-26 | 2015-11-01 |  |  | Antoine Trouvé | 10h | 10h | 720 | 720 |
| 11 | 2.1.8 | Liste des ressources |  | 2d | 2015-11-01 A | 2015-11-04 A | 10 | 100% |  | 2015-11-01 | 2015-11-04 | 2d | 2015-11-01 | 2015-11-04 |  |  | Antoine Trouvé | 4h | 4h | 288 | 288 |
| 12 | 2.1.9 | Coût prévisionnel |  | 1d | 2015-11-11 A | 2015-11-12 A | 9 | 100% |  | 2015-11-11 | 2015-11-12 | 1d | 2015-11-11 | 2015-11-12 |  |  | Antoine Trouvé | 2h | 2h | 144 | 144 |
| 13 | 2.2 | Validation du besoin client | milestone, manual | 0d | 2015-11-15 | 2015-11-15 | 3 |  |  |  |  |  |  |  |  |  | Antoine Trouvé |  |  |  |  |
| 14 | 2.3 | **Rédaction des spécifications détaillées** |  | 38d | 2015-11-15 A | 2015-12-15 | 3 | 3% | 36.7d | 2015-11-15 | 2015-12-19 | 40d | 2015-11-15 | 2015-12-15 | 33.5d | 0d |  | 88h | 3h | 6,336 | 216 |
| 15 | 2.3.1 | Rédaction et mise en forme du document |  | 5d | 2015-12-10 | 2015-12-15 | 21 |  |  | 2015-12-12 | 2015-12-19 | 5d | 2015-12-10 | 2015-12-15 | 33.5d | 0d | Antoine Trouvé | 10h |  | 720 |  |
| 16 | 2.3.2 | Analyse technique par fonction |  | 13d | 2015-11-21 | 2015-11-30 | 17 |  |  | 2015-11-21 | 2015-12-01 | 15d | 2015-11-21 | 2015-11-30 | 33.5d | 0d | Antoine Trouvé | 26h |  | 1,872 |  |
| 17 | 2.3.3 | Conception du diagramme de classe |  | 10d | 2015-11-15 | 2015-11-21 | 3 |  |  | 2015-11-15 | 2015-11-21 | 10d | 2015-11-15 | 2015-11-21 | 33.5d | 0d | Antoine Trouvé | 20h |  | 1,440 |  |
| 18 | 2.3.4 | Schéma détaillé de la base de données |  | 5d | 2015-11-21 | 2015-11-25 | 17 |  |  | 2015-11-21 | 2015-11-25 | 5d | 2015-11-21 | 2015-11-25 | 56.5d |  | Antoine Trouvé | 10h |  | 720 |  |
| 19 | 2.3.5 | Planification et rédaction des tests |  | 6d | 2015-11-30 A | 2015-12-05 | 16 | 25% | 4.5d | 2015-12-02 | 2015-12-06 | 6d | 2015-11-30 | 2015-12-05 | 33.5d | 0d | Antoine Trouvé | 12h | 3h | 864 | 216 |
| 20 | 2.3.6 | Mise en place des règles de nommage |  | 1d | 2015-12-05 | 2015-12-05 | 19 |  |  | 2015-12-06 | 2015-12-07 | 1d | 2015-12-05 | 2015-12-05 | 41.5d |  | Antoine Trouvé | 2h |  | 144 |  |
| 21 | 2.3.7 | Conception du diagramme de composants |  | 4d | 2015-12-05 | 2015-12-09 | 19 |  |  | 2015-12-06 | 2015-12-12 | 4d | 2015-12-05 | 2015-12-09 | 33.5d | 0d | Antoine Trouvé | 8h |  | 576 |  |
| 22 | 3 | **Développement** |  | 158d | 2015-12-16 | 2016-05-28 | 14 |  |  | 2015-12-19 | 2016-04-16 | 113d? | 2015-12-16 | 2016-05-28 | 33.5d | 0d |  | 316h |  | 22,752 |  |
| 23 | 3.1 | Mise en place de l'environnement de développement |  | 4d | 2015-12-16 | 2015-12-20 | 15 |  |  | 2015-12-19 | 2015-12-23 | 4d? | 2015-12-16 | 2015-12-20 | 33.5d | 0d | Antoine Trouvé | 8h |  | 576 |  |
| 24 | 3.2 | Conception de la base de données |  | 4d | 2015-12-20 | 2015-12-27 | 23 |  |  | 2015-12-26 | 2015-12-29 | 4d? | 2015-12-20 | 2015-12-27 | 33.5d | 0d | Antoine Trouvé | 8h |  | 576 |  |
| 25 | 3.3 | Développement du Web Service |  | 30d | 2015-12-27 | 2016-01-26 | 24 |  |  | 2015-12-30 | 2016-01-23 | 25d? | 2015-12-27 | 2016-01-26 | 33.5d | 0d | Antoine Trouvé | 60h |  | 4,320 |  |
| 26 | 3.4 | Développement du Backend |  | 30d | 2016-01-26 | 2016-02-28 | 25 |  |  | 2016-01-24 | 2016-02-12 | 20d? | 2016-01-26 | 2016-02-28 | 33.5d | 0d | Antoine Trouvé | 60h |  | 4,320 |  |
| 27 | 3.5 | Développement Android |  | 30d | 2016-02-28 | 2016-03-26 | 26 |  |  | 2016-02-13 | 2016-03-07 | 20d? | 2016-02-28 | 2016-03-26 | 33.5d | 0d | Antoine Trouvé | 60h |  | 4,320 |  |
| 28 | 3.6 | Développement IOS |  | 30d | 2016-03-26 | 2016-05-01 | 27 |  |  | 2016-03-07 | 2016-03-23 | 20d? | 2016-03-26 | 2016-05-01 | 33.5d | 0d | Antoine Trouvé | 60h |  | 4,320 |  |
| 29 | 3.7 | Développement Windows Phone |  | 30d | 2016-05-02 | 2016-05-28 | 28 |  |  | 2016-03-23 | 2016-04-16 | 20d? | 2016-05-02 | 2016-05-28 | 33.5d | 0d | Antoine Trouvé | 60h |  | 4,320 |  |

Notes:
- 16: Maquette, description, test associé

| ID | WBS | Task | Type | Duration | Start | Finish | Predecessors | Baseline start | Baseline finish | Baseline duration | Baseline 1 start | Baseline 1 finish | Total slack | Free slack | Constraint | Resources | Work | Cost |
| --- | --- | --- | --- | --- | --- | --- | --- | --- | --- | --- | --- | --- | --- | --- | --- | --- | --- | --- |
| 30 | 4 | **Test et validation** |  | 34d | 2016-05-28 | 2016-07-01 | 22 | 2016-04-16 | 2016-05-18 | 34d? | 2016-05-28 | 2016-07-01 | 33.5d | 0d |  |  | 68h | 4,896 |
| 31 | 4.1 | Mise en place de l'environnement de test |  | 4d | 2016-05-28 | 2016-06-02 | 29 | 2016-04-16 | 2016-04-21 | 4d? | 2016-05-28 | 2016-06-02 | 33.5d | 0d |  | Antoine Trouvé | 8h | 576 |
| 32 | 4.2 | Test des fonctions applicatives |  | 10d | 2016-06-03 | 2016-06-14 | 31 | 2016-04-22 | 2016-05-03 | 10d? | 2016-06-03 | 2016-06-14 | 33.5d | 0d |  | Antoine Trouvé | 20h | 1,440 |
| 33 | 4.3 | Test du Backend |  | 10d | 2016-06-15 | 2016-06-26 | 32 | 2016-05-04 | 2016-05-11 | 10d? | 2016-06-15 | 2016-06-26 | 33.5d | 0d |  | Antoine Trouvé | 20h | 1,440 |
| 34 | 4.4 | Test du Web service |  | 10d | 2016-06-27 | 2016-07-01 | 33 | 2016-05-12 | 2016-05-18 | 10d? | 2016-06-27 | 2016-07-01 | 33.5d |  |  | Antoine Trouvé | 20h | 1,440 |
| 35 | 5 | Validation des tests | milestone, manual | 0d | 2016-07-02 | 2016-07-02 | 30 |  |  |  |  |  |  |  |  | Antoine Trouvé |  |  |
| 36 | 6 | Demande de déploiement dans les stores | milestone, manual | 0d | 2016-07-02 | 2016-07-02 | 35 |  |  |  |  |  |  |  |  | Antoine Trouvé |  |  |
| 37 | 7 | **Déploiement** |  | 11d | 2016-07-02 | 2016-07-08 | 30 | 2016-05-18 | 2016-05-29 | 11d? | 2016-07-02 | 2016-07-08 | 33.5d |  |  |  | 22h | 1,584 |
| 38 | 7.1 | Mise en place de l'environnement de production |  | 4d | 2016-07-02 | 2016-07-04 |  | 2016-05-18 | 2016-05-21 | 4d? | 2016-07-02 | 2016-07-04 | 33.5d | 0d |  | Antoine Trouvé | 8h | 576 |
| 39 | 7.2 | Intégration des applications dans l'environnement de production |  | 3d | 2016-07-05 | 2016-07-07 | 38 | 2016-05-22 | 2016-05-25 | 3d? | 2016-07-05 | 2016-07-07 | 33.5d | 0d |  | Antoine Trouvé | 6h | 432 |
| 40 | 7.3 | Déploiement de la solution finale |  | 3d | 2016-07-07 | 2016-07-07 | 39 | 2016-05-26 | 2016-05-29 | 3d? | 2016-07-07 | 2016-07-07 | 33.5d | 0d |  | Antoine Trouvé | 6h | 432 |
| 41 | 7.4 | Mise à disposition de l'application dans les stores |  | 1d | 2016-07-08 | 2016-07-08 | 40 | 2016-05-29 | 2016-05-29 | 1d? | 2016-07-08 | 2016-07-08 | 33.5d |  |  | Antoine Trouvé | 2h | 144 |
| 42 | 8 | **Plan de Management Projet** |  | 306.5d | 2015-10-07 | 2016-08-07 |  | 2015-11-22 | 2016-08-07 | 263.5d | 2015-11-22 | 2016-08-07 | 0d |  |  |  | 6.6h | 475.2 |
| 43 | 8.1 | Plan de Management Projet 1 | manual | 0.3d | 2015-11-22 | 2015-11-22 |  | 2015-11-22 | 2015-11-22 | 0.3d | 2015-11-22 | 2015-11-22 |  |  | start no earlier than 2015-11-22 | Antoine Trouvé | 0.6h | 43.2 |
| 44 | 8.2 | Plan de Management Projet 2 | manual | 0.3d | 2015-11-29 | 2015-11-29 |  | 2015-11-29 | 2015-11-29 | 0.3d | 2015-11-29 | 2015-11-29 |  |  | start no earlier than 2015-11-29 | Antoine Trouvé | 0.6h | 43.2 |
| 45 | 8.3 | Plan de Management Projet 3 | manual | 0.3d | 2015-12-06 | 2015-12-06 |  | 2015-12-06 | 2015-12-06 | 0.3d | 2015-12-06 | 2015-12-06 |  |  | start no earlier than 2015-12-06 | Antoine Trouvé | 0.6h | 43.2 |
| 46 | 8.4 | Plan de Management Projet 4 | manual | 0.3d | 2015-12-13 | 2015-12-13 |  | 2015-12-13 | 2015-12-13 | 0.3d | 2015-12-13 | 2015-12-13 |  |  | start no earlier than 2015-12-13 | Antoine Trouvé | 0.6h | 43.2 |
| 47 | 8.5 | Plan de Management Projet 5 | manual | 0.3d | 2015-12-20 | 2015-12-20 |  | 2015-12-20 | 2015-12-20 | 0.3d | 2015-12-20 | 2015-12-20 |  |  | start no earlier than 2015-12-20 | Antoine Trouvé | 0.6h | 43.2 |
| 48 | 8.6 | Plan de Management Projet 6 | manual | 0.3d | 2015-12-27 | 2015-12-27 |  | 2015-12-27 | 2015-12-27 | 0.3d | 2015-12-27 | 2015-12-27 |  |  | start no earlier than 2015-12-27 | Antoine Trouvé | 0.6h | 43.2 |
| 49 | 8.7 | Plan de Management Projet 7 | manual | 0.3d | 2016-01-03 | 2016-01-03 |  | 2016-01-03 | 2016-01-03 | 0.3d | 2016-01-03 | 2016-01-03 |  |  | start no earlier than 2016-01-03 | Antoine Trouvé | 0.6h | 43.2 |
| 50 | 8.8 | Plan de Management Projet 8 | manual | 0.3d | 2016-01-10 | 2016-01-10 |  | 2016-01-10 | 2016-01-10 | 0.3d | 2016-01-10 | 2016-01-10 |  |  | start no earlier than 2016-01-10 | Antoine Trouvé | 0.6h | 43.2 |
| 51 | 8.9 | Plan de Management Projet 9 | manual | 0.3d | 2016-01-17 | 2016-01-17 |  | 2016-01-17 | 2016-01-17 | 0.3d | 2016-01-17 | 2016-01-17 |  |  | start no earlier than 2016-01-17 | Antoine Trouvé | 0.6h | 43.2 |
| 52 | 8.10 | Plan de Management Projet 10 | manual | 0.3d | 2016-01-24 | 2016-01-24 |  | 2016-01-24 | 2016-01-24 | 0.3d | 2016-01-24 | 2016-01-24 |  |  | start no earlier than 2016-01-24 | Antoine Trouvé | 0.6h | 43.2 |
| 53 | 8.11 | Plan de Management Projet 11 | manual | 0.3d | 2016-01-31 | 2016-01-31 |  | 2016-01-31 | 2016-01-31 | 0.3d | 2016-01-31 | 2016-01-31 |  |  | start no earlier than 2016-01-31 | Antoine Trouvé | 0.6h | 43.2 |
| 54 | 8.12 | Demande de déploiement dans les stores | milestone | 0d | 2015-10-07 | 2015-10-07 |  | 2016-05-18 | 2016-05-18 |  | 2016-07-01 | 2016-07-01 | 306.5d |  |  | Antoine Trouvé |  |  |
| 55 | 8.13 | Audit projet - Gestion de projet | milestone, manual | 0d | 2016-01-28 | 2016-01-28 |  | 2016-01-28 | 2016-01-28 |  | 2016-01-28 | 2016-01-28 |  |  |  | Antoine Trouvé |  |  |
| 56 | 8.14 | Audit Projet - Programmation | milestone, manual | 0d | 2016-05-12 | 2016-05-12 |  | 2016-05-12 | 2016-05-12 |  | 2016-05-12 | 2016-05-12 |  |  |  | Antoine Trouvé |  |  |
| 57 | 8.15 | Audit - Programmation | milestone, manual | 0d | 2016-05-19 | 2016-05-19 |  | 2016-05-19 | 2016-05-19 |  | 2016-05-19 | 2016-05-19 |  |  |  | Antoine Trouvé |  |  |
| 58 | 8.16 | Livraison Projet | milestone, manual | 0d | 2016-08-07 | 2016-08-07 |  | 2016-08-07 | 2016-08-07 |  | 2016-08-07 | 2016-08-07 |  |  |  | Antoine Trouvé |  |  |
